# ASN1 Verification

Schedule from Planner, 2019-07-15 to 2019-08-16.
Phase: Phase I

## Calendars

- Default: Mon-Fri 08:00-12:00, 13:00-17:00; Sat-Sun off.

## Resources

| Resource |
| --- |
| Eng1 |
| Eng2 |
| Eng3 |
| Intern1 |
| Intern2 |

## Schedule

| ID | WBS | Task | Type | Duration | Start | Finish | Predecessors | Resources | Work |
| --- | --- | --- | --- | --- | --- | --- | --- | --- | --- |
| 1 | 1 | ber_check_tag spec |  |  | 2019-07-15 | 2019-07-18 |  | Eng1; Eng2 | 56h |
| 2 | 2 | ber_tlv_length specs |  |  | 2019-07-18 | 2019-07-29 | 1 | Eng2; Eng3 | 112h |
| 3 | 3 | spec of ber_check_tag | milestone | 0d | 2019-07-29 | 2019-07-29 | 2, 1 |  |  |
| 4 | 4 | ber_check_tag proof |  |  | 2019-07-18 | 2019-08-07 | 1 | Eng1 | 112h |
| 5 | 5 | ber_tlv_length proofs |  |  | 2019-07-29 | 2019-08-16 | 2 | Eng2 | 112h |
| 6 | 6 | ber_tlv_tag specs and proofs |  |  | 2019-07-15 | 2019-08-01 |  | Eng3 | 112h |
| 7 | 7 | Correctness of ber_check_tag | milestone | 0d | 2019-08-07 | 2019-08-07 | 4 | Eng1; Eng2; Eng3 |  |
| 8 | 8 | **Boolean decoder** |  |  | 2019-07-15 | 2019-07-23 |  | Intern1 [50%] | 64h |
| 9 | 8.1 | Spec |  |  | 2019-07-15 | 2019-07-15 |  |  | 8h |
| 10 | 8.2 | Proof |  |  | 2019-07-15 | 2019-07-23 |  |  | 56h |
| 11 | 9 | **Boolean encoder** |  |  | 2019-07-15 | 2019-07-23 |  | Intern2 [50%] | 64h |
| 12 | 9.1 | Spec |  |  | 2019-07-15 | 2019-07-15 |  |  | 8h |
| 13 | 9.2 | Proof |  |  | 2019-07-15 | 2019-07-23 |  |  | 56h |
| 14 | 10 | Spec and proof of Boolean encoder | milestone | 0d | 2019-07-23 | 2019-07-23 | 8 |  |  |
| 15 | 11 | **Native Integer decoder** |  |  | 2019-07-15 | 2019-07-25 |  | Intern1 | 128h |
| 16 | 11.1 | Spec |  |  | 2019-07-15 | 2019-07-16 |  |  | 16h |
| 17 | 11.2 | **Proof** |  |  | 2019-07-17 | 2019-07-25 | 16 |  | 112h |
| 18 | 11.2.1 | ber_decode_primitive |  |  | 2019-07-17 | 2019-07-25 |  |  | 56h |
| 19 | 11.2.2 | der_write_tag |  |  | 2019-07-17 | 2019-07-25 |  |  | 56h |
| 20 | 12 | **Native Integer encoder** |  |  | 2019-07-15 | 2019-07-25 |  | Intern2 | 88h |
| 21 | 12.1 | Spec |  |  | 2019-07-15 | 2019-07-16 |  |  | 16h |
| 22 | 12.2 | **Proof** |  |  | 2019-07-17 | 2019-07-25 | 16 |  | 72h |
| 23 | 12.2.1 | der_encode_primitive |  |  | 2019-07-17 | 2019-07-25 | 16 |  | 56h |
| 24 | 12.2.2 | integer_compare |  |  | 2019-07-17 | 2019-07-18 |  |  | 16h |
| 25 | 13 | Proof automation |  |  | 2019-08-07 | 2019-08-09 | 7 | Eng1; Eng2; Eng3 | 56h |
| 26 | 14 | classifying C constructs, rewriting C code |  |  | 2019-08-07 | 2019-08-16 | 7 | Eng3 | 56h |
| 27 | 15 | Correctness of Native integer encoder | milestone | 0d | 2019-07-25 | 2019-07-25 | 15, 20 | Intern1; Intern2 |  |

Notes:
- 2: (used in ber_check_tag) / ber_fetch_length / ber_skip_length / der_tlv_length_serialize
- 3: (used in every decoder)

| ID | WBS | Task | Type | Duration | Start | Finish | Predecessors | Resources | Work |
| --- | --- | --- | --- | --- | --- | --- | --- | --- | --- |
| 28 | 16 | **Native real decoder** |  |  | 2019-07-18 | 2019-08-07 | 1 | Eng1; Eng2; Eng3; Intern1 | 448h |
| 29 | 16.1 | revision of float spec |  |  | 2019-07-18 | 2019-07-23 |  | Eng1; Intern1 | 56h |
| 30 | 16.2 | asn_double2REAL |  |  | 2019-07-18 | 2019-08-07 |  |  | 112h |
| 31 | 16.3 | asn_REAL2double |  |  | 2019-07-18 | 2019-08-07 |  |  | 112h |
| 32 | 16.4 | NativeReal_decode_ber |  |  | 2019-07-18 | 2019-07-29 |  |  | 56h |
| 33 | 16.5 | NativeReal_encode_der |  |  | 2019-07-18 | 2019-07-29 |  |  | 56h |
| 34 | 16.6 | REAL_compare |  |  | 2019-07-18 | 2019-07-29 |  |  | 56h |
| 35 | 17 | Native real decoder | milestone | 0d | 2019-07-29 | 2019-07-29 | 33, 32 | Eng1; Eng2; Eng3; Intern1 |  |
